# 各种升级工作安排

How a schedule from a web Gantt chart changed from version to version. A marks actual dates.

## Version 1 (saved 2024-12-17)

| ID | WBS | Task | Duration | Start | Finish | Predecessors |
| --- | --- | --- | --- | --- | --- | --- |
| 2 | 1 | **Zenith Magento 升级和迁移** | 24d | 2024-12-18 | 2025-01-20 |  |
| 3 |  | 后端开发 | 15d | 2024-12-18 | 2025-01-07 |  |
| 4 |  | 生产 infra 准备、测试数据准备 | 5d | 2024-12-18 | 2024-12-24 |  |
| 5 |  | 生产 ACK 部署 | 5d | 2024-12-25 | 2024-12-31 | 4 |
| 6 |  | 开发配合全量测试 | 2d | 2025-01-08 | 2025-01-09 | 3 |
| 7 |  | 生产环境临时域名下全量测试 | 3d | 2025-01-08 | 2025-01-10 | 3 |
| 8 |  | 生产环境切换、回归等 | 1d | 2025-01-13 | 2025-01-13 | 7 |
| 9 |  | 测试环境迁移到 ACK | 3d | 2025-01-15 | 2025-01-17 |  |
| 10 |  | 测试环境回归 | 1d | 2025-01-20 | 2025-01-20 | 9 |
| 11 | 2 | **TagHeuer Magento 升级和迁移** | 27d | 2024-12-18 | 2025-01-23 |  |
| 12 |  | 后端开发 | 16d | 2024-12-18 | 2025-01-08 |  |
| 13 |  | 生产 infra 准备、测试数据准备 | 5d | 2024-12-18 | 2024-12-24 |  |
| 14 |  | 生产 ACK 部署 | 5d | 2025-01-01 | 2025-01-07 | 5 |
| 15 |  | CI/CD配置 | 1d | 2025-01-08 | 2025-01-08 | 14 |
| 16 |  | 开发配合全量测试 | 3d | 2025-01-09 | 2025-01-13 | 12 |
| 17 |  | 生产环境临时域名下全量测试 | 5d | 2025-01-09 | 2025-01-15 | 12 |
| 18 |  | 生产环境切换、回归等 | 1d | 2025-01-16 | 2025-01-16 | 17 |
| 19 |  | 测试环境迁移到 ACK | 3d | 2025-01-20 | 2025-01-22 |  |
| 20 |  | 测试环境回归 | 1d | 2025-01-23 | 2025-01-23 | 19 |

## Version 2 (saved 2024-12-18)

Last finish 2025-01-23 → 2025-01-24 (+1d).

Changed:

| ID | Task | Start | Finish |
| --- | --- | --- | --- |
| 2 | **Zenith Magento 升级和迁移** | 2024-12-18 → 2024-12-19 (+1d) | 2025-01-20 → 2025-01-21 (+1d) |
| 3 | 后端开发 | 2024-12-18 → 2024-12-19 (+1d) | 2025-01-07 → 2025-01-08 (+1d) |
| 4 | 生产 infra 准备、测试数据准备 | 2024-12-18 → 2024-12-19 (+1d) | 2024-12-24 → 2024-12-25 (+1d) |
| 5 | 生产 ACK 部署 | 2024-12-25 → 2024-12-26 (+1d) | 2024-12-31 → 2025-01-01 (+1d) |
| 6 | 开发配合全量测试 | 2025-01-08 → 2025-01-09 (+1d) | 2025-01-09 → 2025-01-10 (+1d) |
| 7 | 生产环境临时域名下全量测试 | 2025-01-08 → 2025-01-09 (+1d) | 2025-01-10 → 2025-01-13 (+3d) |
| 8 | 生产环境切换、回归等 | 2025-01-13 → 2025-01-14 (+1d) | 2025-01-13 → 2025-01-14 (+1d) |
| 9 | 测试环境迁移到 ACK | 2025-01-15 → 2025-01-16 (+1d) | 2025-01-17 → 2025-01-20 (+3d) |
| 10 | 测试环境回归 | 2025-01-20 → 2025-01-21 (+1d) | 2025-01-20 → 2025-01-21 (+1d) |
| 11 | **TagHeuer Magento 升级和迁移** | 2024-12-18 → 2024-12-19 (+1d) | 2025-01-23 → 2025-01-24 (+1d) |
| 12 | 后端开发 | 2024-12-18 → 2024-12-19 (+1d) | 2025-01-08 → 2025-01-09 (+1d) |
| 13 | 生产 infra 准备、测试数据准备 | 2024-12-18 → 2024-12-19 (+1d) | 2024-12-24 → 2024-12-25 (+1d) |
| 14 | 生产 ACK 部署 | 2025-01-01 → 2025-01-02 (+1d) | 2025-01-07 → 2025-01-08 (+1d) |
| 15 | CI/CD配置 | 2025-01-08 → 2025-01-09 (+1d) | 2025-01-08 → 2025-01-09 (+1d) |
| 16 | 开发配合全量测试 | 2025-01-09 → 2025-01-10 (+1d) | 2025-01-13 → 2025-01-14 (+1d) |
| 17 | 生产环境临时域名下全量测试 | 2025-01-09 → 2025-01-10 (+1d) | 2025-01-15 → 2025-01-16 (+1d) |
| 18 | 生产环境切换、回归等 | 2025-01-16 → 2025-01-17 (+1d) | 2025-01-16 → 2025-01-17 (+1d) |
| 19 | 测试环境迁移到 ACK | 2025-01-20 → 2025-01-21 (+1d) | 2025-01-22 → 2025-01-23 (+1d) |
| 20 | 测试环境回归 | 2025-01-23 → 2025-01-24 (+1d) | 2025-01-23 → 2025-01-24 (+1d) |
